lane,task,start,end,gate_at_end
Government,Brief DFAT and ASNO; open talks under the Australia–Euratom agreement,2026.85,2027.84,
Technical,Characterise streams; confirm volumes,2027.0,2027.6,
Technical,"Simulant trials: loading, leaching, HIP processing",2027.6,2028.55,G1 Formulation qualified
Regulatory,Pre-application dialogue with COVRA and ONDRAF as licensees,2027.0,2028.45,G2 Package accepted
Social licence,Consult host communities (Petten or Nieuwdorp; Fleurus or Dessel); baseline survey; publish wasteform evidence,2027.1,2028.55,
Economic,Model NTP; set savings-share terms,2026.85,2027.35,
ANSTO plant,SyMo commissioning to operating licence (timing set by ARPANSA),2026.85,2028.45,G3 Operating licence
Commercial,Term sheets: COVRA with Curium; ONDRAF,2027.45,2028.05,
Commercial,Sign licences; first operations,2028.75,2029.35,
